# 罗田数据提交

Schedule from a web Gantt chart, 2024-07-10 to 2024-08-19.
Saturdays and Sundays are off

## Schedule

| ID | WBS | Task | Duration | Start | Finish | Predecessors | Complete | inPeople | Status |
| --- | --- | --- | --- | --- | --- | --- | --- | --- | --- |
| 2 | 1 | 六大类数据及关联小类数据关联相关部门确定 | 3d | 2024-07-11 | 2024-07-15 |  | 100% | 张佐昊 | done |
| 3 | 2 | 编码赋码接口申请 | 3d | 2024-07-11 | 2024-07-15 |  | 100% | 张佐昊 | done |
| 4 | 3 | 县域提交标准的解读与罗田需要注意的事项文件制作 | 3d | 2024-07-11 | 2024-07-15 |  | 100% | 张佐昊 | done |
| 5 | 4 | 房屋面二次核验新功能开发，测试，上线 | 4d | 2024-07-11 | 2024-07-16 |  | 30% | 于珏 |  |
| 6 | 5 | 周二政府会议定调相关安排 | 1d | 2024-07-16 | 2024-07-16 | 2, 3, 4 | 100% | 政府 | done |
| 7 | 6 | 汇编工作机制材料 | 14d | 2024-07-17 | 2024-08-05 | 6 |  | 政府 |  |
| 8 | 7 | 县域数据目录确认 | 9d | 2024-07-17 | 2024-07-29 | 6 |  | 张佐昊 |  |
| 9 | 8 | 制定本地相应的制度规定和标准规范 | 9d | 2024-07-17 | 2024-07-29 | 6 |  | 宋树才 |  |
| 10 | 9 | 建立满足市级要求的县域数据成果库 | 9d | 2024-07-17 | 2024-07-29 | 6 |  | 陈峥旭 |  |
| 11 | 10 | 民政或自规部门出具中心区面积证明材料 | 9d | 2024-07-17 | 2024-07-29 | 6 |  | 政府 |  |
| 12 | 11 | 罗田城区桥面归属于那个道路面--民政局 | 9d | 2024-07-17 | 2024-07-29 | 6 |  | 政府 |  |
| 13 | 12 | 城区行政单位电子政务外网覆盖率100% | 14d | 2024-07-17 | 2024-08-05 | 6 |  | 政府 |  |
| 14 | 13 | 统一标准地址流水线V2.0改造 | 14d | 2024-07-17 | 2024-08-05 | 6 |  | 张佐昊 |  |
| 15 | 14 | 开发区人口录入 | 14d | 2024-07-17 | 2024-08-05 | 6 |  | 罗泽阳 |  |
| 16 | 15 | 开发区企业数据录入 | 14d | 2024-07-17 | 2024-08-05 | 6 |  | 罗泽阳 |  |
| 17 | 16 | 房屋面二次核验培训准备 | 3d | 2024-07-12 | 2024-07-16 |  | 30% | 张佐昊 |  |
| 18 | 17 | 房屋面二次核验培训 | 1d | 2024-07-17 | 2024-07-17 | 6, 17, 5, 19 |  | 张佐昊 | waiting |
| 19 | 18 | 增补的4000条房屋面数据上系统 | 3d | 2024-07-11 | 2024-07-15 |  | 50% | 陈峥旭 |  |
| 20 | 19 | 房屋面二次核验 | 8d | 2024-07-18 | 2024-07-29 | 18 |  | 网格员（罗泽阳，张绪江） | waiting |
| 21 | 20 | 开发区房屋面类型确认 | 8d | 2024-07-18 | 2024-07-29 | 18 |  | 网格员（罗泽阳，张绪江） | waiting |
| 22 | 21 | 行政区划、城市道路、水域河流数据编码赋码（包括调试） | 14d | 2024-07-17 | 2024-08-05 | 25, 23, 24 |  | 梁迁，张绪江 | waiting |
| 23 | 22 | 城市道路数据准备 | 5d | 2024-07-10 | 2024-07-16 |  | 100% | 张绪江 | done |
| 24 | 23 | 水域河流数据准备 | 5d | 2024-07-10 | 2024-07-16 |  | 50% | 李浩然 |  |
| 25 | 24 | 行政区划数据准备 | 5d | 2024-07-10 | 2024-07-16 |  | 30% | 张绪江 |  |
| 26 | 25 | 标准地址数据编码赋码 | 1d | 2024-08-06 | 2024-08-06 | 28, 22 |  | 梁迁（张绪江辅助） | waiting |
| 27 | 26 | 成果房屋面数据编码赋码 | 1d | 2024-08-07 | 2024-08-07 | 26 |  | 张绪江 | waiting |
| 28 | 27 | 标准地址数据准备 | 5d | 2024-07-30 | 2024-08-05 | 21, 20 |  | 张绪江 | waiting |
| 29 | 28 | 数据交汇市平台并与市平台对接 | 8d | 2024-08-08 | 2024-08-19 | 31, 27, 30, 34, 35 |  | 张佐昊 | waiting |
| 30 | 29 | 航天宏图中心城区dem数据 | 18d | 2024-07-10 | 2024-08-02 |  |  | 航天宏图 |  |
| 31 | 30 | 附属性建筑物编码赋码 | 1d | 2024-08-06 | 2024-08-06 | 33, 32 |  | 张绪江 | waiting |
| 32 | 31 | 开发区附属性建筑物类型确认 | 14d | 2024-07-17 | 2024-08-05 | 6 |  | 开发区（罗泽阳，张绪江） |  |
| 33 | 32 | 附属性建筑物标明建筑物类型和名称 | 14d | 2024-07-17 | 2024-08-05 | 6 |  | 开发区（罗泽阳，张绪江） |  |
| 34 | 33 | 城区人口按照省标准导出 | 2d | 2024-08-06 | 2024-08-07 | 15 |  | 张绪江 | waiting |
| 35 | 34 | 城区单位按照省标准导出 | 2d | 2024-08-06 | 2024-08-07 | 16 |  | 张绪江 | waiting |
